How a schedule from an exported table changed from version to version. A marks actual dates.

## Version 1 (saved 2026-10-11)

Note of the change: 🔄 WBS + 총괄표 데이터 자동 동기화 [2026-10-11 09:04 KST]

| ID | Task | Start | Finish |
| --- | --- | --- | --- |
| 38750aa9-577d-81d3-bac1-e5fc640f4506 | [4.1.3] 구축 관리 | 2026-10-01 | 2026-12-18 |
| 38750aa9-577d-8179-a713-c6048a947bd6 | [4.1.2] 나라장터 입찰 공고 낙찰자(업체선정) 계약 업무 진행 및 기술협상 실시, 계약 | 2026-04-01 | 2026-09-21 |
| 38750aa9-577d-81bd-a951-c01b6ab50d17 | [4.1.1] 대상지 현장실사 | 2024-01-01 | 2026-09-22 |
| 38750aa9-577d-81eb-94c1-c2ec3195be47 | [4.13] 스마트폴&디스플레이 | 2026-04-01 | 2026-08-31 |
| 38750aa9-577d-81a6-b053-e5714c46e044 | [4.12] 이노베이션 관제 센터 구축 | 2024-10-01 | 2025-06-30 |
| 38750aa9-577d-8105-a7c6-eee8a9edc9f0 | [4.11] 시설물 위치기반 표준 서비스 플랫폼 | 2026-04-01 | 2026-08-31 |
| 36050aa9-577d-8192-ac54-fc16f966f150 | [7] 구축 완료 후 운영(3년) | 2026-01-01 | 2028-12-31 |
| 33750aa9-577d-81e1-9b40-e989d319cc7b | Slack to Notion 자동화 오류 수정 - Claude |  |  |
| 33650aa9-577d-813d-afb7-dd8a4ed19a15 | [4.14.3] 시설 구축 및 관련 플랫폼 데이터 연동 | 2026-05-01 | 2026-07-31 |
| 33650aa9-577d-81d7-a1db-fd392d72380e | [4.14.2] 현장실사 및 현장 여건을 반영한 구축 계획 수립 | 2026-05-15 | 2026-05-31 |
| 33650aa9-577d-8106-9bdd-e363b114c614 | [4.14.1] 나라장터 입찰 공고 낙찰자(업체선정) 계약 업무 진행 및 기술협상 실시 | 2026-04-01 | 2026-05-15 |
| 33650aa9-577d-816a-aa8a-c2087b70532d | [4.14] 무인매장 | 2026-04-01 | 2026-08-31 |
| 33650aa9-577d-8183-81b1-fe7233e1fd7c | [4.13.3] 시설 구축 및 관련 플랫폼 데이터 연동 | 2026-06-01 | 2026-11-30 |
| 33650aa9-577d-81a4-b978-d9d08f7a65cf | [4.13.2] 현장실사 및 현장 여건을 반영한 구축 계획 수립 | 2026-05-15 | 2026-05-31 |
| 33650aa9-577d-8153-b94f-f78703073c50 | [4.13.1] 나라장터 입찰 공고 낙찰자(업체선정) 계약 업무 진행 및 기술협상 실시 | 2026-04-01 | 2026-05-15 |
| 32050aa9-577d-81e4-b5a8-fe756e58bace | [5.5] 시범운영(Pilot) 및 안정화 | 2026-08-01 | 2026-10-31 |
| 32050aa9-577d-817a-b6b1-e1c48da8d3b7 | [5.4] 교육·매뉴얼·운영절차 수립 | 2026-09-01 | 2026-10-31 |
| 32050aa9-577d-8158-853a-d81f10ae505b | [5.3] 데이터 초기구축/검수/이관 | 2026-08-01 | 2026-10-31 |
| 32050aa9-577d-818b-ba0e-f6e4fc00426d | [5.2] 성능/보안 테스트 | 2026-08-01 | 2026-10-31 |
| 31f50aa9-577d-81e5-a6fb-e9448958473d | WBS 자동화 연동 동기화 문제 - Claude |  |  |
| 31b50aa9-577d-8123-ab64-c826b0ea069d | [◆M3] ◆ Milestone: 준공(사업종료) | 2025-12-31 | 2025-12-31 |
| 31b50aa9-577d-8120-ade8-f442325e45c6 | [6.1] 준공서류/성과보고/이관 | 2026-12-10 | 2026-12-31 |
| 31b50aa9-577d-81d2-9e5e-edfd28a46633 | [6] 준공·검수·인수인계·이관 | 2025-12-01 | 2025-12-31 |
| 31b50aa9-577d-8160-8ec3-c009a9268ecf | [◆M2] ◆ Milestone: 구축 완료 | 2026-12-31 | 2026-12-31 |
| 31b50aa9-577d-816f-a46c-f7144004473f | [5.1] 통합 테스트(기능/연계) | 2026-08-01 | 2026-10-31 |
| 31b50aa9-577d-8153-a043-f8250cc8b786 | [5] 통합시험·시범운영·안정화 | 2026-08-01 | 2026-10-31 |
| 31b50aa9-577d-8114-8d55-d0d96d7a4d45 | [4.12.3] 사업성과 검수 및 감리 | 2025-01-01 | 2025-03-31 |
| 31b50aa9-577d-815e-8e5b-d3332fc0d639 | [4.12.2] 인테리어 상세설계 | 2024-10-01 | 2025-01-31 |
| 31b50aa9-577d-81c1-8aaa-e75d9b0400b0 | [4.12.1] 나라장터 입찰 공고 낙찰자(업체선정) 계약 업무 진행 및 기술협상 실시 | 2024-10-01 | 2025-01-31 |
| 31b50aa9-577d-81ab-a21a-f1e6e45f9e37 | [4.11.3] 플랫폼 개발 진척사항 및 단위테스트 관리 | 2026-05-15 | 2026-10-31 |
| 31b50aa9-577d-8134-a20b-c54ba5da0c66 | [4.11.2] 상세설계(아키텍처,서비스 시나리오, 인터페이스 정의) | 2026-04-15 | 2026-10-31 |
| 31b50aa9-577d-8129-b3fb-c0c42fb29865 | [4.11.1] 나라장터 입찰 공고 낙찰자(업체선정) 계약 업무 진행 및 기술협상 실시 | 2026-04-01 | 2026-04-30 |
| 31b50aa9-577d-813b-a71d-e9bbbcc5b537 | [4.10.3] 플랫폼 개발 진척사항 및 단위테스트 관리 | 2026-05-15 | 2026-10-31 |
| 31b50aa9-577d-819c-8605-f2f1c02fe7d2 | [4.10.2] 상세설계(아키텍처,서비스 시나리오, 인터페이스 정의) | 2026-04-15 | 2026-10-31 |
| 31b50aa9-577d-81c8-82a7-f2e848ef30f8 | [4.10.1] 나라장터 입찰 공고 낙찰자(업체선정) 계약 업무 진행 및 기술협상 실시 | 2026-04-01 | 2026-04-30 |
| 31b50aa9-577d-810c-8cb7-e6b418bfeb94 | [4.9.3] AI시티관제 플랫폼 연계 | 2026-05-01 | 2026-07-31 |
| 31b50aa9-577d-8108-a5c2-da59c1897a23 | [4.9.2] 현장실사 및 현장 여건을 반영한 구축 계획 수립 | 2026-04-15 | 2026-04-30 |
| 31b50aa9-577d-81e8-87bd-d98e57ba72d0 | [4.9.1] 나라장터 입찰 공고 낙찰자(업체선정) 계약 업무 진행 및 기술협상 실시 | 2026-04-01 | 2026-04-30 |
| 31b50aa9-577d-81d7-8882-e3b3b6831174 | [4.9] 수요응답형 교통(DRT) | 2026-04-01 | 2026-07-31 |
| 31b50aa9-577d-819c-9d4f-de98aadbcd17 | [4.8.3] AI시티관제 플랫폼 연계 | 2026-05-01 | 2026-10-31 |
| 31b50aa9-577d-8130-a62b-c9628f267a2d | [4.8.2] 현장실사 및 현장 여건을 반영한 구축 계획 수립 | 2025-11-01 | 2025-12-31 |
| 31b50aa9-577d-81f7-bd43-f86e0835d30b | [4.8.1] 나라장터 입찰 공고 낙찰자(업체선정) 계약 업무 진행 및 기술협상 실시 | 2025-08-01 | 2025-10-20 |
| 31b50aa9-577d-8135-91f9-f52543a59d05 | [4.8] 유무선 네트워크 구축(공공WiFi/네트워크 구축 등) | 2025-08-01 | 2026-07-31 |
| 31b50aa9-577d-815e-9a82-d9f853d9ea82 | [4.7.4] 충남광역데이터 허브 연계 | 2026-01-01 | 2026-11-30 |
| 31b50aa9-577d-812f-8a25-dee13482ff79 | [4.7.3] 플랫폼 개발 진척사항 및 단위테스트 관리 | 2026-01-01 | 2026-11-30 |
| 31b50aa9-577d-81d4-a7ee-e737d0b3602c | [4.7.2] 상세설계(아키텍처,서비스 시나리오, 인터페이스 정의) | 2026-01-01 | 2026-03-31 |
| 31b50aa9-577d-8164-9dd7-c8cd02a270dd | [4.7.1] 나라장터 입찰 공고 낙찰자(업체선정) 계약 업무 진행 및 기술협상 실시 | 2025-11-07 | 2025-12-16 |
| 31b50aa9-577d-81fb-a385-d82996ee7bc6 | [4.7] 데이터 허브·정보관리 서비스(OIM) | 2025-11-07 | 2026-07-31 |
| 31b50aa9-577d-816f-815b-ee358fe8032c | [4.6.6] HW 플랫폼 설치 및 테스트 관리 | 2026-04-01 | 2026-07-31 |
| 31b50aa9-577d-810f-818f-ed46fdd26700 | [4.6.5] 보안 솔루션/망연계 적용 | 2026-04-01 | 2026-07-31 |
| 31b50aa9-577d-81f4-b460-c1e05303df67 | [4.6.4] VDI/운영포털(CMP) 구축 | 2026-04-01 | 2026-07-31 |
| 31b50aa9-577d-8195-9e90-e2706adfa216 | [4.6.3] SDDC 코어 구축(컴퓨팅/네트워크/스토리지) | 2026-04-01 | 2026-07-31 |
| 31b50aa9-577d-81ac-b82c-eae2426f5509 | [4.6.2] 분리망(보안망·서비스망) 설계/구현 | 2026-01-01 | 2026-03-31 |
| 31b50aa9-577d-810a-b956-d07bafc08835 | [4.6.1] 나라장터 입찰 공고 낙찰자(업체선정) 계약 업무 진행 및 기술협상 실시 | 2025-11-07 | 2025-12-16 |
| 31b50aa9-577d-8106-81b2-f9a320ea9ca5 | [4.6] 기반 인프라 구축(SDDC/보안/네트워크) | 2024-08-01 | 2025-12-31 |
| 31b50aa9-577d-81b2-8b02-f29decbf960c | [4.5.3] 플랫폼 개발 진척사항 및 단위테스트 관리 | 2026-01-01 | 2026-11-30 |
| 31b50aa9-577d-81ae-81c7-de67b80b025a | [4.5.2] 상세설계(아키텍처,서비스 시나리오, 인터페이스 정의) | 2026-01-01 | 2026-11-30 |
| 31b50aa9-577d-81ce-b02a-ee166c2fa137 | [4.5.1] 나라장터 입찰 공고 낙찰자(업체선정) 계약 업무 진행 및 기술협상 실시 | 2025-11-07 | 2025-12-16 |
| 31b50aa9-577d-81e7-9cd8-d7b3d136a7ae | [4.5] AI융복합 서비스 플랫폼 | 2025-11-07 | 2026-07-31 |
| 31b50aa9-577d-8177-bff4-c1eb9c8f703c | [4.4.3] 플랫폼 개발 진척사항 및 단위테스트 관리 | 2026-01-01 | 2026-11-30 |
| 31b50aa9-577d-8180-9379-cf0d91483a00 | [4.4.2] 상세설계(아키텍처,서비스 시나리오, 인터페이스 정의) | 2026-01-01 | 2026-11-30 |
| 31b50aa9-577d-81bd-8a50-edfa188ae44b | [4.4.1] 나라장터 입찰 공고 낙찰자(업체선정) 계약 업무 진행 및 기술협상 실시 | 2025-11-07 | 2025-12-16 |
| 31b50aa9-577d-81e5-9f47-d1b9a81b24c0 | [4.4] AI 시티관제 플랫폼(ACP) | 2025-11-07 | 2026-07-31 |
| 31b50aa9-577d-8192-9b9d-d3e1d7117619 | [4.3.3] 플랫폼 개발 진척사항 및 단위테스트 관리 | 2026-01-01 | 2026-11-30 |
| 31b50aa9-577d-812e-86cd-cda8e15b49a1 | [4.3.2] 상세설계(아키텍처,서비스 시나리오, 인터페이스 정의) | 2026-01-01 | 2026-11-30 |
| 31b50aa9-577d-810f-a3bb-eb0529d9040e | [4.3.1] 나라장터 입찰 공고 낙찰자(업체선정) 계약 업무 진행 및 기술협상 실시 | 2025-11-07 | 2025-12-16 |
| 31b50aa9-577d-8178-83a3-e4dcb471f735 | [4.3] 모바일 전자시민증(ECC) | 2025-11-07 | 2026-07-31 |
| 31b50aa9-577d-81f1-ad28-c8a6fda8a45c | [4.2.3] 플랫폼 개발 진척사항 및 단위테스트 관리 | 2026-01-01 | 2026-11-30 |
| 31b50aa9-577d-81ad-bde9-dc6255acbf7c | [4.2.2] 선정사와 협의를 통한 상세설계(아키텍처,서비스 시나리오, 인터페이스 정의) | 2026-01-01 | 2026-04-30 |
| 31b50aa9-577d-8199-b28c-c5c4c4e04225 | [4.2.1] 나라장터 입찰 공고 낙찰자(업체선정) 계약 업무 진행 및 기술협상 실시, 계약 | 2025-11-07 | 2025-12-16 |

| ID | Task | Start | Finish |
| --- | --- | --- | --- |
| 31b50aa9-577d-81c1-87cb-f5768f9c58a6 | [4.2] 디지털 OASIS 접수/운영/거래 서비스(NOP) | 2025-11-07 | 2026-07-31 |
| 31b50aa9-577d-8113-bf60-c2f4c132b2c3 | [4.1] 메타버스 플랫폼 | 2026-04-01 | 2026-08-31 |
| 31b50aa9-577d-8157-a379-cfec1e55bd5f | [4] 서비스 구축(앱/웹/플랫폼) 구축 | 2024-01-01 | 2025-12-31 |
| 31b50aa9-577d-816e-8172-f1cd415178a4 | [3.3] 사전 규격 공고 질의응답/제안평가 지원 | 2025-01-01 | 2026-04-30 |
| 31b50aa9-577d-819e-b6cd-ca77ab9e177a | [3.2.4.7] 메타버스 플랫폼 | 2026-03-16 | 2026-04-30 |
| 31b50aa9-577d-815e-9241-e8ab91f866ed | [3.2.4.6] SDDC기반 IT 인프라 구축 | 2025-08-28 | 2025-10-20 |
| 31b50aa9-577d-814f-8be0-fbbf7523cd44 | [3.2.4.5] AI융복합 서비스 플랫폼 | 2025-08-28 | 2025-10-20 |
| 31b50aa9-577d-8119-b9b4-df643ca93e9f | [3.2.4.4] 이노베이션 센터 조경시설 구축 | 2025-03-27 | 2025-04-10 |
| 31b50aa9-577d-8129-98f3-f7adc4aa2d1a | [3.2.4.3] 이노베이션 센터 음향시설 구축 | 2025-03-18 | 2025-03-19 |
| 31b50aa9-577d-81d9-b697-f7f886cd6f66 | [3.2.4.2] 이노베이션 센터 기자재 구매 및 구축 용역 | 2025-06-02 | 2025-06-13 |
| 31b50aa9-577d-8140-a7bd-c2d2c70bb171 | [3.2.4.1] 이노베이션 센터 인테리어 실시설계 및 시공 용역 | 2024-10-08 | 2024-10-14 |
| 31b50aa9-577d-8101-82a9-ded6f85200e1 | [3.2.4] 비즈니스 인큐베이팅 서비스 | 2024-10-08 | 2026-04-30 |
| 31b50aa9-577d-81e4-b65d-ff4e2057b44c | [3.2.3.2] 시설물 위치기반 표준 서비스 플랫폼 | 2026-03-16 | 2026-04-30 |
| 31b50aa9-577d-81e5-b155-c822fb418031 | [3.2.3.1] 정보관리 서비스 | 2025-08-28 | 2025-10-20 |
| 31b50aa9-577d-818a-84aa-f368409f65db | [3.2.3] 디지털 OASIS 정보관리 서비스 | 2025-08-28 | 2026-04-30 |
| 31b50aa9-577d-812a-83e7-e676db6ea8d3 | [3.2.2.1] AI통합관제 플랫폼 | 2025-08-28 | 2025-10-20 |
| 31b50aa9-577d-8190-8b3f-d1e937a08ec8 | [3.2.2] 디지털 OASIS 운영자 서비스 | 2025-08-28 | 2025-10-20 |
| 31b50aa9-577d-81e3-990b-f1844de1af33 | [3.2.1.8] 네트워크 구축 | 2025-08-05 | 2025-08-22 |
| 31b50aa9-577d-81fc-a1cd-c637f4f529df | [3.2.1.7] 스마트공공WiFi | 2025-08-05 | 2025-08-22 |
| 31b50aa9-577d-816f-86fe-d58edfa19903 | [3.2.1.6] 무인매장 | 2026-03-16 | 2026-04-30 |
| 31b50aa9-577d-8123-9396-cf5103a8c362 | [3.2.1.5] 스마트폴&디스플레이 | 2026-03-16 | 2026-04-30 |
| 31b50aa9-577d-8179-af36-e335b80b18c9 | [3.2.1.4] 수요응답형 모빌리티 DRT 서비스 | 2026-03-16 | 2026-04-30 |
| 31b50aa9-577d-81b2-8bd7-cb8387bdfc3f | [3.2.1.3] 전자시민증 | 2025-08-28 | 2025-10-20 |
| 31b50aa9-577d-814f-bb0b-ff133ae9c9ee | [3.2.1.2] 디지털 노마드 접수/운영/거래 | 2025-08-28 | 2025-10-20 |
| 31b50aa9-577d-8135-8553-c57f09d3a39b | [3.2.1.1] 디지털 OASIS SPOT 구축 용역 | 2026-03-16 | 2026-04-30 |
| 31b50aa9-577d-81d9-a5f6-e021da4a6ad7 | [3.2.1] 디지털 OASIS 사용자 서비스 | 2025-08-28 | 2025-09-08 |
| 31b50aa9-577d-8185-9263-ec916ecaaaef | [3.2] 나라장터 발주 지원(사전규격, 본공고) | 2024-04-01 | 2026-04-30 |
| 31b50aa9-577d-81a1-ae99-c80893916932 | [3.1.4.7] 메타버스 플랫폼 | 2025-01-01 | 2026-02-28 |
| 31b50aa9-577d-81ef-b148-d59220975bcd | [3.1.4.6] SDDC기반 IT 인프라 구축 | 2025-01-01 | 2025-07-30 |
| 31b50aa9-577d-8169-9885-fa115f439f5b | [3.1.4.5] AI융복합 서비스 플랫폼 | 2025-01-01 | 2025-07-30 |
| 31b50aa9-577d-8141-829b-de6bfb3d7c6c | [3.1.4.4] 이노베이션 센터 조경시설 구축 | 2025-03-17 | 2025-03-26 |
| 31b50aa9-577d-81b5-a027-f9e8722ea364 | [3.1.4.3] 이노베이션 센터 음향시설 구축 | 2025-03-06 | 2025-03-17 |
| 31b50aa9-577d-8121-bca6-d197810e6e88 | [3.1.4.2] 이노베이션 센터 기자재 구매 및 구축 용역 | 2025-04-05 | 2025-05-26 |
| 31b50aa9-577d-8182-8b45-d48044aa1441 | [3.1.4.1] 이노베이션 센터 인테리어 실시설계 및 시공 용역 | 2024-04-02 | 2024-09-30 |
| 31b50aa9-577d-8117-8d94-c19daf5e4f53 | [3.1.4] 비즈니스 인큐베이팅 서비스 | 2024-04-02 | 2026-02-28 |
| 31b50aa9-577d-817f-affe-c44ed51c7457 | [3.1.3.2] 시설물 위치기반 표준 서비스 플랫폼 | 2025-01-01 | 2026-02-28 |
| 31b50aa9-577d-8172-a0a2-d2a59bf7b679 | [3.1.3.1] 정보관리 서비스 | 2025-01-01 | 2025-07-30 |
| 31b50aa9-577d-815a-9c81-d65a96488735 | [3.1.3] 디지털 OASIS 정보관리 서비스 | 2025-01-01 | 2026-02-28 |
| 31b50aa9-577d-8192-90dc-fcb222ba62b7 | [3.1.2.1] AI통합관제 플랫폼 | 2025-01-01 | 2025-07-30 |
| 31b50aa9-577d-8137-9c28-e23b43aee543 | [3.1.2] 디지털 OASIS 운영자 서비스 | 2024-01-01 | 2025-07-30 |
| 31b50aa9-577d-8109-b3ba-c6114227a6a7 | [3.1.1.8] 네트워크 구축 | 2025-01-01 | 2025-06-30 |
| 31b50aa9-577d-814a-a142-c4ec2c10cc46 | [3.1.1.7] 스마트공공WiFi | 2025-01-01 | 2025-06-30 |
| 31b50aa9-577d-81cb-99f1-d5369b44b983 | [3.1.1.6] 무인매장 | 2025-04-01 | 2026-03-31 |
| 31b50aa9-577d-8132-8c63-d79691b16c51 | [3.1.1.5] 스마트폴&디스플레이 | 2025-04-01 | 2026-03-31 |
| 31b50aa9-577d-81c4-b27d-deedb1b41dec | [3.1.1.4] 수요응답형 모빌리티 DRT 서비스 | 2025-04-01 | 2026-03-31 |
| 31b50aa9-577d-8142-8468-f1413614a5c0 | [3.1.1.3] 전자시민증 | 2025-01-01 | 2025-07-30 |
| 31b50aa9-577d-8153-b56f-e63d304da4c7 | [3.1.1.2] 디지털 노마드 접수/운영/거래 | 2025-01-01 | 2025-07-30 |
| 31b50aa9-577d-8110-86a0-f76aa6a98f66 | [3.1.1.1] 디지털 OASIS SPOT 구축 용역 | 2025-03-01 | 2026-03-31 |
| 31b50aa9-577d-81d8-a022-dc3d9cac0862 | [3.1.1] 디지털 OASIS 사용자 서비스 | 2025-01-01 | 2026-03-31 |
| 31b50aa9-577d-8176-ab7b-cd00046c11e6 | [3.1] RFP/규격서 작성 | 2024-04-01 | 2026-03-31 |
| 31b50aa9-577d-815d-9f4c-dbcd8ff51d31 | [3] 나라장터 발주 지원 | 2024-04-01 | 2026-03-31 |
| 31b50aa9-577d-8167-a7ca-d960ba0b4d8d | [2.4.2.6] 무인매장 | 2025-01-01 | 2026-02-28 |
| 31b50aa9-577d-81ae-9c4a-fcf0af5fa162 | [2.4.2.5] 디지털 OASIS SPOT 구축(토목+이동형 트레일러 배치 등) | 2025-01-01 | 2026-02-28 |
| 31b50aa9-577d-817b-a155-d98b8efe66ba | [2.4.2.4] 수요응답형 버스 구매, 스마트 정류장, 구축 | 2025-01-01 | 2026-02-28 |
| 31b50aa9-577d-81dd-9256-e9bd8595ef29 | [2.4.2.3] 스마트폴&디스플레이 | 2024-06-01 | 2026-01-31 |
| 31b50aa9-577d-8198-8806-f503dd1333a5 | [2.4.2.2] 공공WiFi, 네트워크 구축 | 2024-06-01 | 2025-06-30 |
| 31b50aa9-577d-81f2-bfe3-ca9ca567331d | [2.4.2.1] SDDC기반 IT 인프라 구축 | 2024-03-01 | 2025-07-30 |
| 31b50aa9-577d-81ab-87dd-ca3563630296 | [2.4.2] IT 및 시설 인프라 구축 | 2024-03-01 | 2026-02-28 |
| 31b50aa9-577d-8181-b145-ede9e101497e | [2.4.1.7] 메타버스 플랫폼 | 2025-01-01 | 2025-11-30 |
| 31b50aa9-577d-81a9-93b2-e6ce9f331409 | [2.4.1.6] AI융복합 서비스 플랫폼 | 2024-03-01 | 2025-09-30 |
| 31b50aa9-577d-8141-9eca-c1373b464b74 | [2.4.1.5] 시설물 위치기반 표준 서비스 플랫폼 | 2025-01-01 | 2025-09-30 |
| 31b50aa9-577d-81b4-b207-e546183cd501 | [2.4.1.4] 정보관리 서비스 | 2024-03-01 | 2025-07-30 |
| 31b50aa9-577d-81d2-9027-e746353977ef | [2.4.1.3] AI통합관제 플랫폼 | 2024-03-01 | 2025-07-30 |
| 31b50aa9-577d-816f-ae6b-d30722c3ccd0 | [2.4.1.2] 전자시민증 | 2024-03-01 | 2025-07-30 |
| 31b50aa9-577d-815a-8dc2-f6a127be589c | [2.4.1.1] 디지털 노마드 접수/운영/거래 | 2024-03-01 | 2025-07-30 |
| 31b50aa9-577d-8187-87c4-ea6cf0df9169 | [2.4.1] 서비스 플랫폼별 사업 예산 도출 | 2024-03-01 | 2025-09-30 |
| 31b50aa9-577d-816d-9e81-e02fd8dbc579 | [2.4] 각 서비스별 정량적 사업예산 도출 | 2024-01-01 | 2025-09-30 |
| 31b50aa9-577d-8101-b5fb-d0265da5219b | [2.3.2] 공공WiFi, 네트워크 구축 | 2024-09-01 | 2025-06-30 |
| 31b50aa9-577d-8138-9f02-ed365465e26f | [2.3.1] SDDC기반 IT 인프라 구축 | 2024-03-01 | 2025-07-31 |
| 31b50aa9-577d-81bd-a041-fdd063f98bb2 | [2.3] IT 인프라 아키텍처 | 2024-03-01 | 2025-07-31 |

| ID | Task | Start | Finish |
| --- | --- | --- | --- |
| 31b50aa9-577d-8154-bc67-f17ecf827014 | [2.2.2] 서비스 플랫폼별 설계 문서 | 2024-06-01 | 2025-09-30 |
| 31b50aa9-577d-8108-a400-c4e35446e55d | [2.2.1] 서비스 요구사항 정합화 | 2024-02-01 | 2025-09-30 |
| 31b50aa9-577d-8112-85ea-d15171fe9599 | [2.2] 서비스 플랫폼별 설계 문서 | 2024-02-01 | 2025-09-30 |
| 31b50aa9-577d-81e2-ac86-dfc26d573342 | [2.1.2] 서비스 및 인프라 정보화 전략 계획 | 2024-01-01 | 2025-06-30 |
| 31b50aa9-577d-8164-9c21-ef18a2349445 | [2.1.1] 거점(디지털 OASIS SPOT 및 이노베이션 센터 현장 실사 | 2024-01-01 | 2025-10-31 |
| 31b50aa9-577d-81c8-866c-f2a55283d223 | [2.1] 현황조사/분석 | 2024-01-01 | 2025-10-31 |
| 31b50aa9-577d-81bf-bada-c464157be121 | [2] 실시설계 | 2024-01-01 | 2025-11-30 |
| 31b50aa9-577d-81fe-9611-cc91af0a17e1 | [1.7] 정산관리 | 2023-12-01 | 2026-12-31 |
| 31b50aa9-577d-81ee-b1cc-c57b4119a7c0 | [1.6] 예산관리 | 2023-12-01 | 2026-12-31 |
| 31b50aa9-577d-8125-ade6-de716ec66c3d | [1.5] 산출물/형상/변경관리 | 2024-01-01 | 2026-12-31 |
| 31b50aa9-577d-8195-81c8-dfb4d616cd7e | [◆M1] ◆ Milestone: 실시계획 승인(국토부) | 2024-06-30 | 2024-06-30 |
| 31b50aa9-577d-8113-94a1-c6372772a8d7 | [1.4] 국토부 실시계획 협의/승인 지원 | 2024-02-01 | 2026-03-31 |
| 31b50aa9-577d-815e-b567-e0bd7c711ae0 | [1.3.5] 사업 완료 보고 | 2026-09-30 | 2026-12-31 |
| 31b50aa9-577d-810d-abb8-eef44a15fec1 | [1.3.4.3] 26년 연간 성과보고 | 2026-11-01 | 2026-12-31 |
| 31b50aa9-577d-81be-ae3d-e8981117071d | [1.3.4.2] 25년 연간 성과보고 | 2026-01-01 | 2026-01-29 |
| 31b50aa9-577d-8140-b449-c8c12f0349b5 | [1.3.4.1] 24년 연간 성과보고 | 2025-01-01 | 2025-03-25 |
| 31b50aa9-577d-8173-9bca-ed79f1a79a72 | [1.3.4] 연간 성과보고 | 2024-01-01 | 2026-12-31 |
| 31b50aa9-577d-8164-adee-d2692ae1854c | [1.3.3.12] 26년도 4분기 보고 | 2026-11-30 | 2026-12-31 |
| 31b50aa9-577d-81b0-ade2-e8d55e782593 | [1.3.3.11] 26년도 3분기 보고 | 2026-10-01 | 2026-10-15 |
| 31b50aa9-577d-816b-a5cd-c156e1ee19d3 | [1.3.3.10] 26년도 2분기 보고 | 2026-07-01 | 2026-07-15 |
| 31b50aa9-577d-812c-9db6-f3c5a1ee72b8 | [1.3.3.9] 26년도 1분기 보고 | 2026-04-01 | 2026-04-15 |
| 31b50aa9-577d-8116-b9c9-db31ed576559 | [1.3.3.8] 25년도 4분기 보고 | 2026-01-01 | 2026-01-29 |
| 31b50aa9-577d-8128-97eb-cd3e7708093b | [1.3.3.7] 25년도 3분기 보고 | 2025-10-01 | 2025-10-23 |
| 31b50aa9-577d-81c8-8133-ce026e98b74f | [1.3.3.6] 25년도 2분기 보고 | 2025-07-01 | 2025-07-29 |
| 31b50aa9-577d-8113-bbae-c8dd86ce5f77 | [1.3.3.5] 25년도 1분기 보고 | 2025-03-01 | 2025-04-30 |
| 31b50aa9-577d-81f2-bdb1-d142bf65471b | [1.3.3.4] 24년도 4분기 보고 | 2024-12-15 | 2025-01-17 |
| 31b50aa9-577d-817c-80eb-c4065938a145 | [1.3.3.3] 24년도 3분기 보고 | 2024-10-01 | 2024-10-22 |
| 31b50aa9-577d-8141-8169-f6abcdd803f0 | [1.3.3.2] 24년도 2분기 보고 | 2024-06-01 | 2024-07-17 |
| 31b50aa9-577d-81d8-ab2e-d6642870035e | [1.3.3.1] 24년도 1분기 보고 | 2024-06-01 | 2024-07-17 |
| 31b50aa9-577d-8173-b745-c86d336c4170 | [1.3.3] 분기 보고서 작성 | 2023-12-01 | 2026-12-31 |
| 31b50aa9-577d-8195-b878-cadd17a523a8 | [1.3.2] 월별 관리카드 | 2024-04-01 | 2026-12-31 |
| 31b50aa9-577d-81ec-8b09-d66f09bb22e3 | [1.3.1] 회의록 | 2023-12-01 | 2026-12-31 |
| 31b50aa9-577d-81ed-a1f4-d9c94a27b250 | [1.3] 보고/회의 | 2023-12-15 | 2026-12-31 |
| 31b50aa9-577d-81e5-9a61-d8bcd550c6f8 | [1.2] 공정 및 사업관리 | 2023-12-01 | 2026-12-31 |
| 31b50aa9-577d-81a9-8eec-f8ca0eaa609d | [1.1] 킥오프/착수 | 2023-12-01 | 2024-01-31 |
| 31b50aa9-577d-813e-9552-ee7971a90d42 | [1] 프로젝트 관리/거버넌스 | 2023-12-01 | 2026-12-31 |
| 31350aa9-577d-81dd-a55c-c7874383a1ca | 범례 |  |  |
| 30c50aa9-577d-8187-acd7-fdd6ea0187bc | 노션 실시간 분석 대시보드 수정 - Claude |  |  |

## Version 2 (saved 2026-10-28)

Note of the change: 🔄 WBS + 총괄표 데이터 자동 동기화 [2026-10-29 03:39 KST]

Last finish stays 2028-12-31.

Added:

| ID | Task | Start | Finish |
| --- | --- | --- | --- |
| 40750aa9-577d-816e-960a-fee61961ce1f | [4.16.3] 준공 | 2026-12-14 | 2026-12-31 |
| 40750aa9-577d-81b8-9065-cbf4e53d0f6f | [4.16.2] 계획 수립 및 한전 신청 | 2026-11-09 | 2026-11-13 |
| 40750aa9-577d-81e1-98b2-c97a816059a2 | [4.16.1] 나라장터 입찰 공고 낙찰자(업체선정) 계약 업무 진행 및 기술협상 실시 | 2026-11-02 | 2026-11-06 |
| 40750aa9-577d-81b0-a27e-e55208f75d4b | [4.16] 디지털 OASIS SPOT 전기공사 | 2026-11-02 | 2026-12-31 |
| 40750aa9-577d-813f-88e8-f1698bcaad77 | [4.15.3] 준공 감리 | 2026-12-14 | 2026-12-31 |
| 40750aa9-577d-8194-a692-d008ac3b8e9b | [4.15.2] 디지털 OASIS SPOT 구축사와 감리 계획 수립 | 2026-11-09 | 2026-11-13 |
| 40750aa9-577d-813c-998e-f30f26e969d5 | [4.15.1] 나라장터 입찰 공고 낙찰자(업체선정) 계약 업무 진행 및 기술협상 실시 | 2026-10-28 | 2026-11-06 |
| 40750aa9-577d-8125-93cc-dd07df294937 | [4.15] 디지털 OASIS SPOT 통합 감리 | 2026-10-28 | 2026-12-31 |
| 40750aa9-577d-8129-bf25-dcf5368582c1 | [3.2.4.9] 디지털 OASIS SPOT 전기공사 | 2026-10-27 | 2026-11-02 |
| 40750aa9-577d-8192-a69b-f22f5166f57a | [3.2.4.8] 디지털 OASIS SPOT 감리 용역 | 2026-10-08 | 2026-10-31 |

Changed:

| ID | Task | Finish |
| --- | --- | --- |
| 31b50aa9-577d-81b0-ade2-e8d55e782593 | [1.3.3.11] 26년도 3분기 보고 | 2026-10-15 → 2026-10-31 (+16d) |

## Version 3 (saved 2026-11-02)

Note of the change: 🔄 WBS + 총괄표 데이터 자동 동기화 [2026-11-03 07:10 KST]

Last finish stays 2028-12-31.

Added:

| ID | Task |
| --- | --- |
| 40c50aa9-577d-81fc-b598-e9b8e67cab67 | 범례 |

Changed:

| ID | Task | Start | Other |
| --- | --- | --- | --- |
| 31b50aa9-577d-8157-a379-cfec1e55bd5f | 3.2.4.9 | 2024-01-01 → 1970-01-01 (-19723d) | was named [4] 서비스 구축(앱/웹/플랫폼) 구축 |
| 31b50aa9-577d-815d-9f4c-dbcd8ff51d31 | 4.16.3 | 2024-04-01 → 1970-01-01 (-19814d) | was named [3] 나라장터 발주 지원 |
| 31b50aa9-577d-81bf-bada-c464157be121 | 6.1 | 2024-01-01 → 1970-01-01 (-19723d) | was named [2] 실시설계 |
| 31b50aa9-577d-813e-9552-ee7971a90d42 | 7 | 2023-12-01 → 1970-01-01 (-19692d) | was named [1] 프로젝트 관리/거버넌스 |

## Version 4 (saved 2026-11-03)

Note of the change: 🔄 WBS + 총괄표 데이터 자동 동기화 [2026-11-04 04:57 KST]

Last finish stays 2028-12-31.

Removed: 40c50aa9-577d-81fc-b598-e9b8e67cab67 범례

Changed:

| ID | Task | Start | Other |
| --- | --- | --- | --- |
| 31b50aa9-577d-8157-a379-cfec1e55bd5f | [4] 서비스 구축(앱/웹/플랫폼) 구축 | 1970-01-01 → 2024-01-01 (+19723d) | was named 3.2.4.9 |
| 31b50aa9-577d-815d-9f4c-dbcd8ff51d31 | [3] 나라장터 발주 지원 | 1970-01-01 → 2024-04-01 (+19814d) | was named 4.16.3 |
| 31b50aa9-577d-81bf-bada-c464157be121 | [2] 실시설계 | 1970-01-01 → 2024-01-01 (+19723d) | was named 6.1 |
| 31b50aa9-577d-813e-9552-ee7971a90d42 | [1] 프로젝트 관리/거버넌스 | 1970-01-01 → 2023-12-01 (+19692d) | was named 7 |

## Version 5 (saved 2026-11-09)

Note of the change: 🔄 WBS + 총괄표 데이터 자동 동기화 [2026-11-10 07:52 KST]

Last finish stays 2028-12-31.

Added:

| ID | Task |
| --- | --- |
| 41350aa9-577d-81b5-8664-f383da348a02 | 범례 |

Changed:

| ID | Task | Start | Other |
| --- | --- | --- | --- |
| 31b50aa9-577d-8157-a379-cfec1e55bd5f | 3.2.4.9 | 2024-01-01 → 1970-01-01 (-19723d) | was named [4] 서비스 구축(앱/웹/플랫폼) 구축 |
| 31b50aa9-577d-815d-9f4c-dbcd8ff51d31 | 4.16.3 | 2024-04-01 → 1970-01-01 (-19814d) | was named [3] 나라장터 발주 지원 |
| 31b50aa9-577d-81bf-bada-c464157be121 | 6.1 | 2024-01-01 → 1970-01-01 (-19723d) | was named [2] 실시설계 |
| 31b50aa9-577d-813e-9552-ee7971a90d42 | 7 | 2023-12-01 → 1970-01-01 (-19692d) | was named [1] 프로젝트 관리/거버넌스 |

## Version 6 (saved 2026-11-10)

Note of the change: 🔄 WBS + 총괄표 데이터 자동 동기화 [2026-11-11 05:15 KST]

Last finish stays 2028-12-31.

Removed: 41350aa9-577d-81b5-8664-f383da348a02 범례

Changed:

| ID | Task | Start | Other |
| --- | --- | --- | --- |
| 31b50aa9-577d-8157-a379-cfec1e55bd5f | [4] 서비스 구축(앱/웹/플랫폼) 구축 | 1970-01-01 → 2024-01-01 (+19723d) | was named 3.2.4.9 |
| 31b50aa9-577d-815d-9f4c-dbcd8ff51d31 | [3] 나라장터 발주 지원 | 1970-01-01 → 2024-04-01 (+19814d) | was named 4.16.3 |
| 31b50aa9-577d-81bf-bada-c464157be121 | [2] 실시설계 | 1970-01-01 → 2024-01-01 (+19723d) | was named 6.1 |
| 31b50aa9-577d-813e-9552-ee7971a90d42 | [1] 프로젝트 관리/거버넌스 | 1970-01-01 → 2023-12-01 (+19692d) | was named 7 |

## Version 7 (saved 2026-11-16)

Note of the change: 🔄 WBS + 총괄표 데이터 자동 동기화 [2026-11-17 07:44 KST]

Last finish stays 2028-12-31.

Added:

| ID | Task |
| --- | --- |
| 41a50aa9-577d-819a-9f82-c42c334f7ef6 | 범례 |

Changed:

| ID | Task | Start | Other |
| --- | --- | --- | --- |
| 31b50aa9-577d-8157-a379-cfec1e55bd5f | 3.2.4.9 | 2024-01-01 → 1970-01-01 (-19723d) | was named [4] 서비스 구축(앱/웹/플랫폼) 구축 |
| 31b50aa9-577d-815d-9f4c-dbcd8ff51d31 | 4.16.3 | 2024-04-01 → 1970-01-01 (-19814d) | was named [3] 나라장터 발주 지원 |
| 31b50aa9-577d-81bf-bada-c464157be121 | 6.1 | 2024-01-01 → 1970-01-01 (-19723d) | was named [2] 실시설계 |
| 31b50aa9-577d-813e-9552-ee7971a90d42 | 7 | 2023-12-01 → 1970-01-01 (-19692d) | was named [1] 프로젝트 관리/거버넌스 |

## Version 8 (saved 2026-11-17)

Note of the change: 🔄 WBS + 총괄표 데이터 자동 동기화 [2026-11-18 06:30 KST]

Last finish stays 2028-12-31.

Removed: 41a50aa9-577d-819a-9f82-c42c334f7ef6 범례

Changed:

| ID | Task | Start | Other |
| --- | --- | --- | --- |
| 31b50aa9-577d-8157-a379-cfec1e55bd5f | [4] 서비스 구축(앱/웹/플랫폼) 구축 | 1970-01-01 → 2024-01-01 (+19723d) | was named 3.2.4.9 |
| 31b50aa9-577d-815d-9f4c-dbcd8ff51d31 | [3] 나라장터 발주 지원 | 1970-01-01 → 2024-04-01 (+19814d) | was named 4.16.3 |
| 31b50aa9-577d-81bf-bada-c464157be121 | [2] 실시설계 | 1970-01-01 → 2024-01-01 (+19723d) | was named 6.1 |
| 31b50aa9-577d-813e-9552-ee7971a90d42 | [1] 프로젝트 관리/거버넌스 | 1970-01-01 → 2023-12-01 (+19692d) | was named 7 |

## Version 9 (saved 2026-11-24)

Note of the change: 🔄 WBS + 총괄표 데이터 자동 동기화 [2026-11-25 07:55 KST]

Last finish stays 2028-12-31.

Added:

| ID | Task |
| --- | --- |
| 42250aa9-577d-81d7-87fd-fc97603a2a48 | 범례 |

Changed:

| ID | Task | Start | Other |
| --- | --- | --- | --- |
| 31b50aa9-577d-8157-a379-cfec1e55bd5f | 3.2.4.9 | 2024-01-01 → 1970-01-01 (-19723d) | was named [4] 서비스 구축(앱/웹/플랫폼) 구축 |
| 31b50aa9-577d-815d-9f4c-dbcd8ff51d31 | 4.16.3 | 2024-04-01 → 1970-01-01 (-19814d) | was named [3] 나라장터 발주 지원 |
| 31b50aa9-577d-81bf-bada-c464157be121 | 6.1 | 2024-01-01 → 1970-01-01 (-19723d) | was named [2] 실시설계 |
| 31b50aa9-577d-813e-9552-ee7971a90d42 | 7 | 2023-12-01 → 1970-01-01 (-19692d) | was named [1] 프로젝트 관리/거버넌스 |

## Version 10 (saved 2026-11-27)

Note of the change: 🔄 WBS + 총괄표 데이터 자동 동기화 [2026-11-28 06:48 KST]

Last finish stays 2028-12-31.

Removed: 42250aa9-577d-81d7-87fd-fc97603a2a48 범례

Changed:

| ID | Task | Other |
| --- | --- | --- |
| 31b50aa9-577d-815d-9f4c-dbcd8ff51d31 | 4.14.1 | was named 4.16.3 |
| 31b50aa9-577d-81bf-bada-c464157be121 | 4.14 | was named 6.1 |
| 31b50aa9-577d-813e-9552-ee7971a90d42 | 4 | was named 7 |

## Version 11 (saved 2026-11-28)

Note of the change: 🔄 WBS + 총괄표 데이터 자동 동기화 [2026-11-28 22:44 KST]

Last finish stays 2028-12-31.

Changed:

| ID | Task | Start | Other |
| --- | --- | --- | --- |
| 31b50aa9-577d-8157-a379-cfec1e55bd5f | [4] 서비스 구축(앱/웹/플랫폼) 구축 | 1970-01-01 → 2024-01-01 (+19723d) | was named 3.2.4.9 |
| 31b50aa9-577d-815d-9f4c-dbcd8ff51d31 | [3] 나라장터 발주 지원 | 1970-01-01 → 2024-04-01 (+19814d) | was named 4.14.1 |
| 31b50aa9-577d-81bf-bada-c464157be121 | [2] 실시설계 | 1970-01-01 → 2024-01-01 (+19723d) | was named 4.14 |
| 31b50aa9-577d-813e-9552-ee7971a90d42 | [1] 프로젝트 관리/거버넌스 | 1970-01-01 → 2023-12-01 (+19692d) | was named 4 |
